# 220kV朗吟变电站150MW/600MWh构网型储能涉网试验计划

Schedule from a web Gantt chart, 2026-02-10 to 2026-05-29.
Every day is a working day
含春节放假时间

## Schedule

| ID | WBS | Task | Duration | Start | Finish |
| --- | --- | --- | --- | --- | --- |
| 2 | 1 | **涉网试验（常规试验）** | 43d | 2026-02-10 | 2026-03-24 |
| 3 | 1.1 | 有功功率调节能力测试 | 2d | 2026-02-10 | 2026-02-11 |
| 4 | 1.2 | 无功功率调节能力测试 | 2d | 2026-02-12 | 2026-02-13 |
| 5 | 1.3 | 功率因数调节能力测试 | 4d | 2026-03-02 | 2026-03-05 |
| 6 | 1.4 | 过载能力测试 | 2d | 2026-03-06 | 2026-03-07 |
| 7 | 1.5 | 调节转换时间测试 | 2d | 2026-03-08 | 2026-03-09 |
| 8 | 1.6 | 额定能量级转换效率测试 | 4d | 2026-03-10 | 2026-03-13 |
| 9 | 1.7 | 电能质量测试 | 2d | 2026-03-14 | 2026-03-15 |
| 10 | 2 | **涉网试验-构网试验（单元级+多元级）** | 59d | 2026-03-23 | 2026-05-20 |
| 11 | 2.1 | 高电压穿越能力测试 | 4d | 2026-03-23 | 2026-03-26 |
| 12 | 2.2 | 低电压穿越能力测试 | 4d | 2026-03-27 | 2026-03-30 |
| 13 | 2.3 | 连续低电压穿越能力测试 | 4d | 2026-03-31 | 2026-04-03 |
| 14 | 2.4 | 连续低高电压穿越能力测试 | 4d | 2026-04-04 | 2026-04-07 |
| 15 | 2.5 | 过载能力 | 4d | 2026-04-08 | 2026-04-11 |
| 16 | 2.6 | 一次调频 | 4d | 2026-04-12 | 2026-04-15 |
| 17 | 2.7 | 惯量响应 | 4d | 2026-04-16 | 2026-04-19 |
| 18 | 2.8 | 电压适应性测试 | 4d | 2026-04-20 | 2026-04-23 |
| 19 | 2.9 | 频率适应性测试 | 4d | 2026-04-24 | 2026-04-27 |
| 20 | 2.10 | 阻尼控制 | 5d | 2026-04-28 | 2026-05-02 |
| 21 | 2.11 | 相角跳变 | 5d | 2026-05-03 | 2026-05-07 |
| 22 | 2.12 | 跟/构网模式切换 | 4d | 2026-05-08 | 2026-05-11 |
| 23 | 2.13 | 空载零起升压试验 | 3d | 2026-05-12 | 2026-05-14 |
| 24 | 2.14 | 电压阶跃小扰动试验 | 3d | 2026-05-15 | 2026-05-17 |
| 25 | 2.15 | 黑启动测试 | 3d | 2026-05-18 | 2026-05-20 |

Notes:
- 10: 含电网模拟装置调试时间

| ID | WBS | Task | Duration | Start | Finish |
| --- | --- | --- | --- | --- | --- |
| 26 | 3 | **涉网试验-跟构网整站联合运行测试** | 9d | 2026-05-21 | 2026-05-29 |
| 27 | 3.1 | AGC及有功功率测试 | 3d | 2026-05-21 | 2026-05-23 |
| 28 | 3.2 | AVC及无功功率测试 | 3d | 2026-05-24 | 2026-05-26 |
| 29 | 3.3 | 跟构网模式切换测试 | 3d | 2026-05-27 | 2026-05-29 |
